# 自动驾驶管理系统

Schedule from a web Gantt chart, 2026-03-25 to 2026-03-25.
Saturdays and Sundays are off

## Schedule

| ID | WBS | Task | Duration | Start | Finish |
| --- | --- | --- | --- | --- | --- |
| 2 | 1 | **AVP平台** | 1d | 2026-03-25 | 2026-03-25 |
| 3 | 1.1 | **代客泊车预约系统 （移动端）** | 1d | 2026-03-25 | 2026-03-25 |
| 4 | 1.1.1 | **首页** | 1d | 2026-03-25 | 2026-03-25 |
| 5 | 1.1.1.1 | 登录注册 | 1d | 2026-03-25 | 2026-03-25 |
| 6 | 1.1.1.2 | 用户定位展示 | 1d | 2026-03-25 | 2026-03-25 |
| 7 | 1.1.1.3 | 车辆定位展示 | 1d | 2026-03-25 | 2026-03-25 |
| 8 | 1.1.1.4 | 停车场分布展示 | 1d | 2026-03-25 | 2026-03-25 |
| 9 | 1.1.1.5 | 01 | 1d | 2026-03-25 | 2026-03-25 |
| 10 | 1.1.1.6 | 02 | 1d | 2026-03-25 | 2026-03-25 |
| 11 | 1.1.1.7 | 03 | 1d | 2026-03-25 | 2026-03-25 |
| 12 | 1.1.1.8 | 04 | 1d | 2026-03-25 | 2026-03-25 |
| 13 | 1.1.1.9 | 05 | 1d | 2026-03-25 | 2026-03-25 |
| 14 | 1.1.2 | **个人中心** | 1d | 2026-03-25 | 2026-03-25 |
| 15 | 1.1.2.1 | 车辆管理 | 1d | 2026-03-25 | 2026-03-25 |
| 16 | 1.1.2.2 | 预警管理 | 1d | 2026-03-25 | 2026-03-25 |
| 17 | 1.1.2.3 | 泊车记录 | 1d | 2026-03-25 | 2026-03-25 |
| 18 | 1.1.2.4 | 召车记录 | 1d | 2026-03-25 | 2026-03-25 |
